# 010101010010101001010101001010100101

Schedule from MS Project MPX.

## Calendars

- Estándar: Mon-Fri 09:00 am-01:00 pm, 03:00 pm-07:00 pm; Sat-Sun off.

## Schedule

| ID | WBS | Task |
| --- | --- | --- |
| 1 | 0 | CASA DE CAMPO |
| 2 | 0 | CASA DE CAMPO |
| 3 | 0 | NEGOCIACIÓN |
| 4 | 0 | Compra de terreno |
| 5 | 0 | Legalización |
| 6 | 0 | DISEÑO |
| 7 | 0 | Planos |
| 8 | 0 | Levantamiento de información |
| 9 | 0 | Elaboración planos |
| 10 | 0 | Permisos |
| 11 | 0 | Permisos Ambientales |
| 12 | 0 | Permisos de construcción |
| 13 | 0 | Permisos comunitarios |
| 14 | 0 | CONSTRUCCIÓN |
| 15 | 0 | Equipo y Materiales |
| 16 | 0 | Investigación |
| 17 | 0 | Compra |
| 18 | 0 | Entrega |
| 19 | 0 | Ejecución |
| 20 | 0 | Adecuación terreno |
| 21 | 0 | Limpieza y desbroce |
| 22 | 0 | Nivelación |
| 23 | 0 | Cerramiento |
| 24 | 0 | Acometidas |
| 25 | 0 | Estructura |
| 26 | 0 | Cimentación |
| 27 | 0 | Excavación |
| 28 | 0 | Fundición |
| 29 | 0 | Columnas |
| 30 | 0 | Encofrado |
| 31 | 0 | Fundición |
| 32 | 0 | Paredes |
| 33 | 0 | Levantamiento |
| 34 | 0 | manposteria |
| 35 | 0 | Instalación eléctrica |
| 36 | 0 | Ductos |
| 37 | 0 | Cables |
| 38 | 0 | Instalación sanitaria |
| 39 | 0 | Líneas desague |
| 40 | 0 | Tuberias AP |
| 41 | 0 | ENTREGA |
| 42 | 0 | Aceptación del producto |
